# SE_WBS_Vers.1.2

Schedule from MS Project, 2018-10-25 to 2019-01-15, costs in €, A marks actual dates.

## Calendars

- Standard: Mon-Fri 09:00-13:00, 14:00-18:00; Sat-Sun off. Exceptions (off unless hours are given): 2018-10-25 to 2019-01-15 09:00-13:00, 14:00-18:00 (Default, recurring), 2018-11-01 to 2018-11-04 (Ponte Morti), 2018-12-24 to 2018-12-26 (Natale), 2018-12-31 to 2019-01-01 (Capodanno).

## Resources

| Resource | Group | Rate | Cost per use |
| --- | --- | --- | --- |
| Filomena Ferrucci | TOPM |  | 100 |
| Federico Vitale | PM | 70 |  |
| Francesco Vicidomini | PM | 70 |  |
| Alfonso Ruggiero | TM | 50 |  |
| Davide Bottiglieri | TM | 50 |  |
| Francesco Breve | TM | 50 |  |
| Giuseppe Cavaliere | TM | 50 |  |
| Paolo Cantarella | TM | 50 |  |
| Rosaria Iorio | TM | 50 |  |
| Silvio Corso | TM | 50 |  |
| Vincenzo Sabato | TM | 50 |  |

## Schedule

| ID | WBS | Task | Type | Duration | Start | Finish | Predecessors | Complete | Remaining | Total slack | Constraint | Resources | Work | Actual work | Cost | Actual cost |
| --- | --- | --- | --- | --- | --- | --- | --- | --- | --- | --- | --- | --- | --- | --- | --- | --- |
| 1 | 1 | **SharErasmus** |  | 74d | 2018-10-25 09:00 A | 2019-01-15 18:00 |  | 27% | 53.9d |  |  |  | 9596.64h | 2602.88h | 507,866.4 | 135,988.8 |
| 2 | 1.1 | Inizio Progetto | milestone | 0d | 2018-10-25 09:00 A | 2018-10-25 09:00 A |  | 100% |  |  |  | Federico Vitale; Filomena Ferrucci; Francesco Vicidomini |  |  | 100 | 100 |
| 3 | 1.2 | Kick-Off Meeting |  | 0.25d | 2018-10-25 09:00 A | 2018-10-25 11:00 A | 2 | 100% |  |  |  | Federico Vitale; Francesco Vicidomini | 4h | 4h | 280 | 280 |
| 4 | 1.3 | **RAD Draft** |  | 14d | 2018-10-25 09:00 A | 2018-11-11 18:00 | 2 | 99% | 0d |  |  | Alfonso Ruggiero; Davide Bottiglieri; Federico Vitale; Francesco Breve; Francesco Vicidomini; Giuseppe Cavaliere; Paolo Cantarella; Rosaria Iorio; Silvio Corso; Vincenzo Sabato | 2681.28h | 2082.88h | 140,550.4 | 109,148.8 |
| 5 | 1.3.1 | **Introduzione** |  | 2.5d | 2018-10-25 09:00 A | 2018-10-27 13:00 |  | 99% | 0d | 0d |  | Alfonso Ruggiero; Davide Bottiglieri; Francesco Breve; Giuseppe Cavaliere; Paolo Cantarella; Rosaria Iorio; Silvio Corso; Vincenzo Sabato | 320h | 128h | 16,000 | 6,400 |
| 6 | 1.3.1.1 | Dominio | manual | 0.25d | 2018-10-25 09:00 A | 2018-10-25 11:00 A |  | 100% |  |  |  | Giuseppe Cavaliere; Vincenzo Sabato | 4h | 4h | 200 | 200 |
| 7 | 1.3.1.2 | Obiettivi e criteri di successo | manual | 0.25d | 2018-10-25 09:00 A | 2018-10-25 11:00 A |  | 100% |  |  |  | Giuseppe Cavaliere; Vincenzo Sabato | 4h | 4h | 200 | 200 |
| 8 | 1.3.1.3 | Sistema Corrente |  | 0.25d | 2018-10-25 11:00 A | 2018-10-25 13:00 A | 6 | 100% |  |  |  | Giuseppe Cavaliere; Vincenzo Sabato | 4h | 4h | 200 | 200 |
| 9 | 1.3.1.4 | Activity Diagram |  | 1d | 2018-10-25 14:00 A | 2018-10-26 13:00 A | 8 | 100% |  |  |  | Alfonso Ruggiero; Rosaria Iorio; Giuseppe Cavaliere; Vincenzo Sabato | 16h | 16h | 800 | 800 |
| 10 | 1.3.1.5 | **Sistema Proposto** |  | 1d | 2018-10-26 14:00 A | 2018-10-27 13:00 | 6, 7, 8, 9 | 99% | 0d | 0d |  | Alfonso Ruggiero; Davide Bottiglieri; Francesco Breve; Giuseppe Cavaliere; Paolo Cantarella; Rosaria Iorio; Silvio Corso; Vincenzo Sabato | 132h | 84h | 6,600 | 4,200 |
| 11 | 1.3.1.5.1 | Requisiti Funzionali |  | 1d | 2018-10-26 14:00 A | 2018-10-27 13:00 A |  | 100% |  |  |  | Alfonso Ruggiero; Davide Bottiglieri; Francesco Breve; Giuseppe Cavaliere; Paolo Cantarella; Rosaria Iorio; Silvio Corso; Vincenzo Sabato | 64h | 64h | 3,200 | 3,200 |
| 12 | 1.3.1.5.2 | Requisiti Non Funzionali |  | 0.25d | 2018-10-26 14:00 A | 2018-10-26 16:00 A |  | 100% |  |  |  | Alfonso Ruggiero; Silvio Corso | 4h | 4h | 200 | 200 |
| 13 | 1.3.2 | Meeting |  | 0.25d | 2018-10-29 09:00 A | 2018-10-29 11:00 A | 5 | 100% |  |  | start no earlier than 2018-10-29 09:00 | Alfonso Ruggiero; Davide Bottiglieri; Federico Vitale; Francesco Breve; Francesco Vicidomini; Giuseppe Cavaliere; Paolo Cantarella; Rosaria Iorio; Silvio Corso; Vincenzo Sabato | 20h | 20h | 1,080 | 1,080 |
| 14 | 1.3.3 | **System Model** |  | 4d | 2018-10-29 11:00 A | 2018-11-06 11:00 | 5, 13 | 99% | 0d | 0d |  | Alfonso Ruggiero; Davide Bottiglieri; Francesco Breve; Giuseppe Cavaliere; Paolo Cantarella; Rosaria Iorio; Silvio Corso; Vincenzo Sabato | 576h | 512h | 28,800 | 25,600 |
| 15 | 1.3.3.1 | Scenari |  | 3d | 2018-10-29 11:00 A | 2018-11-05 11:00 A |  | 100% |  |  |  | Alfonso Ruggiero; Davide Bottiglieri; Francesco Breve; Giuseppe Cavaliere; Paolo Cantarella; Rosaria Iorio; Silvio Corso; Vincenzo Sabato | 192h | 192h | 9,600 | 9,600 |
| 16 | 1.3.3.2 | Use Case |  | 1d | 2018-11-05 11:00 A | 2018-11-06 11:00 A | 15 | 100% |  |  |  | Alfonso Ruggiero; Davide Bottiglieri; Francesco Breve; Giuseppe Cavaliere; Paolo Cantarella; Rosaria Iorio; Silvio Corso; Vincenzo Sabato | 64h | 64h | 3,200 | 3,200 |
| 17 | 1.3.3.3 | Use Case Diagram |  | 1d | 2018-11-05 11:00 A | 2018-11-06 11:00 A | 15 | 100% |  |  |  | Alfonso Ruggiero; Davide Bottiglieri; Francesco Breve; Giuseppe Cavaliere; Paolo Cantarella; Rosaria Iorio; Silvio Corso; Vincenzo Sabato | 64h | 64h | 3,200 | 3,200 |
| 18 | 1.3.4 | **Interfaccia Utente** |  | 4.13d | 2018-11-06 11:00 A | 2018-11-10 12:02 | 14 | 99% | 0d | 0d |  | Alfonso Ruggiero; Davide Bottiglieri; Francesco Breve; Giuseppe Cavaliere; Paolo Cantarella; Rosaria Iorio; Silvio Corso; Vincenzo Sabato; Federico Vitale; Francesco Vicidomini | 609.28h | 278.88h | 31,910.4 | 14,068.8 |
| 19 | 1.3.4.1 | **Meeting** |  | 0.26d | 2018-11-06 11:00 A | 2018-11-06 14:04 |  | 99% | 0d | 0d |  | Alfonso Ruggiero; Davide Bottiglieri; Federico Vitale; Francesco Breve; Francesco Vicidomini; Giuseppe Cavaliere; Paolo Cantarella; Rosaria Iorio; Silvio Corso; Vincenzo Sabato | 24.96h | 14.56h | 1,414.4 | 852.8 |
| 20 | 1.3.4.1.1 | Tutorato Draw.io |  | 0.13d | 2018-11-06 11:00 A | 2018-11-06 12:02 A |  | 100% |  |  |  | Federico Vitale; Francesco Vicidomini | 2.08h | 2.08h | 145.6 | 145.6 |
| 21 | 1.3.4.1.2 | Tutorato MarvelApp |  | 0.13d | 2018-11-06 12:02 A | 2018-11-06 14:04 A | 20 | 100% |  |  |  | Federico Vitale; Francesco Vicidomini | 2.08h | 2.08h | 145.6 | 145.6 |
| 22 | 1.3.4.2 | Path Navigazionali |  | 1d | 2018-11-06 12:02 A | 2018-11-07 12:02 A | 20 | 100% |  |  |  | Alfonso Ruggiero; Davide Bottiglieri; Francesco Breve; Giuseppe Cavaliere; Paolo Cantarella; Rosaria Iorio; Silvio Corso; Vincenzo Sabato | 64h | 64h | 3,200 | 3,200 |
| 23 | 1.3.4.3 | Mock-up |  | 3d | 2018-11-07 12:02 A | 2018-11-10 12:02 A | 22, 21 | 100% |  |  |  | Alfonso Ruggiero; Davide Bottiglieri; Francesco Breve; Giuseppe Cavaliere; Paolo Cantarella; Rosaria Iorio; Silvio Corso; Vincenzo Sabato | 192h | 192h | 9,600 | 9,600 |
| 24 | 1.3.5 | **Revisione** |  | 1d | 2018-11-10 12:02 A | 2018-11-11 12:02 | 18, 14, 5 | 99% | 0d | 0d |  | Federico Vitale; Francesco Vicidomini; Silvio Corso | 36h | 24h | 2,280 | 1,520 |
| 25 | 1.3.5.1 | Revisione del Reviewer |  | 0.5d | 2018-11-10 12:02 A | 2018-11-10 17:02 A |  | 100% |  |  |  | Silvio Corso | 4h | 4h | 200 | 200 |
| 26 | 1.3.5.2 | Revisione dei PM |  | 0.5d | 2018-11-10 17:02 A | 2018-11-11 12:02 A | 25 | 100% |  |  |  | Federico Vitale; Francesco Vicidomini | 8h | 8h | 560 | 560 |
| 27 | 1.4 | Consegna RAD Draft | milestone | 0d | 2018-11-11 18:00 A | 2018-11-11 18:00 A | 4 | 100% |  |  |  | Federico Vitale; Filomena Ferrucci |  |  | 100 | 100 |
| 28 | 1.5 | Meeting |  | 0.25d | 2018-11-13 09:00 A | 2018-11-13 11:00 A |  | 100% |  |  | start no earlier than 2018-11-13 09:00 | Alfonso Ruggiero; Davide Bottiglieri; Federico Vitale; Francesco Breve; Francesco Vicidomini; Giuseppe Cavaliere; Paolo Cantarella; Rosaria Iorio; Silvio Corso; Vincenzo Sabato | 20h | 20h | 1,080 | 1,080 |

| ID | WBS | Task | Type | Duration | Start | Finish | Predecessors | Complete | Remaining | Total slack | Free slack | Constraint | Resources | Work | Actual work | Cost | Actual cost |
| --- | --- | --- | --- | --- | --- | --- | --- | --- | --- | --- | --- | --- | --- | --- | --- | --- | --- |
| 29 | 1.6 | **RAD** |  | 7.25d | 2018-11-13 11:00 A | 2018-11-20 13:00 | 27, 28 | 99% | 0d | 0d |  |  | Alfonso Ruggiero; Davide Bottiglieri; Federico Vitale; Francesco Breve; Francesco Vicidomini; Giuseppe Cavaliere; Paolo Cantarella; Rosaria Iorio; Silvio Corso; Vincenzo Sabato | 1292h | 496h | 67,480 | 25,280 |
| 30 | 1.6.1 | Meeting |  | 0.25d | 2018-11-13 11:00 A | 2018-11-13 13:00 A |  | 100% |  |  |  |  | Alfonso Ruggiero; Davide Bottiglieri; Federico Vitale; Francesco Breve; Francesco Vicidomini; Giuseppe Cavaliere; Paolo Cantarella; Rosaria Iorio; Silvio Corso; Vincenzo Sabato | 20h | 20h | 1,080 | 1,080 |
| 31 | 1.6.2 | **Modello ad Oggetti** |  | 6d | 2018-11-13 14:00 A | 2018-11-19 13:00 | 30 | 99% | 0d | 0d |  |  | Alfonso Ruggiero; Davide Bottiglieri; Francesco Breve; Giuseppe Cavaliere; Paolo Cantarella; Rosaria Iorio; Silvio Corso; Vincenzo Sabato | 656h | 432h | 32,800 | 21,600 |
| 32 | 1.6.2.1 | Class Diagram |  | 2.5d | 2018-11-13 14:00 A | 2018-11-15 18:00 A |  | 100% |  |  |  |  | Alfonso Ruggiero; Davide Bottiglieri; Francesco Breve; Giuseppe Cavaliere; Paolo Cantarella; Rosaria Iorio; Silvio Corso; Vincenzo Sabato | 160h | 160h | 8,000 | 8,000 |
| 33 | 1.6.2.2 | Sequence Diagram |  | 2d | 2018-11-16 09:00 A | 2018-11-17 18:00 A | 32 | 100% |  |  |  |  | Alfonso Ruggiero; Davide Bottiglieri; Francesco Breve; Giuseppe Cavaliere; Paolo Cantarella; Rosaria Iorio; Silvio Corso; Vincenzo Sabato | 32h | 32h | 1,600 | 1,600 |
| 34 | 1.6.2.3 | Statechart Diagram |  | 1d | 2018-11-18 09:00 A | 2018-11-18 18:00 A | 33 | 100% |  |  |  |  | Davide Bottiglieri; Francesco Breve; Paolo Cantarella; Rosaria Iorio | 32h | 32h | 1,600 | 1,600 |
| 35 | 1.6.2.4 | Manuale Utente |  | 1.5d | 2018-11-18 09:00 A | 2018-11-19 13:00 A | 33 | 100% |  |  |  |  | Alfonso Ruggiero; Giuseppe Cavaliere; Silvio Corso; Vincenzo Sabato | 48h | 48h | 2,400 | 2,400 |
| 36 | 1.6.3 | **Revisione** |  | 1d | 2018-11-19 14:00 A | 2018-11-20 13:00 | 31 | 99% | 0d | 0d |  |  | Davide Bottiglieri; Federico Vitale; Francesco Vicidomini | 36h | 24h | 2,280 | 1,520 |
| 37 | 1.6.3.1 | Revisione del Reviewer |  | 0.5d | 2018-11-19 14:00 A | 2018-11-19 18:00 A |  | 100% |  |  |  |  | Davide Bottiglieri | 4h | 4h | 200 | 200 |
| 38 | 1.6.3.2 | Revisione dei PM |  | 0.5d | 2018-11-20 09:00 A | 2018-11-20 13:00 A | 37 | 100% |  |  |  |  | Federico Vitale; Francesco Vicidomini | 8h | 8h | 560 | 560 |
| 39 | 1.7 | Consegna RAD | milestone, manual | 0d | 2018-11-20 14:00 | 2018-11-20 14:00 | 29 |  |  |  |  |  | Federico Vitale; Filomena Ferrucci |  |  | 100 |  |
| 40 | 1.8 | **SDD** |  | 6.75d | 2018-11-20 14:00 | 2018-11-27 11:00 | 39 |  |  | 13.95d | 3.75d |  | Alfonso Ruggiero; Davide Bottiglieri; Federico Vitale; Francesco Breve; Francesco Vicidomini; Giuseppe Cavaliere; Paolo Cantarella; Rosaria Iorio; Silvio Corso; Vincenzo Sabato | 946.08h |  | 50,024 |  |
| 41 | 1.8.1 | Meeting |  | 0.25d | 2018-11-20 14:00 | 2018-11-20 16:00 |  |  |  | 13.95d | 0d | start no earlier than 2018-11-20 09:00 | Alfonso Ruggiero; Davide Bottiglieri; Federico Vitale; Francesco Breve; Francesco Vicidomini; Giuseppe Cavaliere; Paolo Cantarella; Rosaria Iorio; Silvio Corso; Vincenzo Sabato | 20h |  | 1,080 |  |
| 42 | 1.8.2 | Introduzione |  | 0.5d | 2018-11-20 16:00 | 2018-11-21 11:00 | 41 |  |  | 13.95d | 0d |  | Davide Bottiglieri; Paolo Cantarella | 8h |  | 400 |  |
| 43 | 1.8.3 | Architettura Sistema Corrente |  | 0.13d | 2018-11-20 16:00 | 2018-11-20 17:02 | 41 |  |  | 19.32d | 5.37d |  | Davide Bottiglieri; Paolo Cantarella | 2.08h |  | 104 |  |
| 44 | 1.8.4 | **Architettura Sistema Proposto** |  | 4d | 2018-11-21 11:00 | 2018-11-25 11:00 | 42, 41 |  |  | 13.95d | 1d |  | Alfonso Ruggiero; Davide Bottiglieri; Francesco Breve; Giuseppe Cavaliere; Paolo Cantarella; Rosaria Iorio; Silvio Corso; Vincenzo Sabato | 324h |  | 16,200 |  |
| 45 | 1.8.4.1 | Decomposizione in sottosistemi |  | 1.5d | 2018-11-21 11:00 | 2018-11-22 16:00 |  |  |  | 13.95d | 0d |  | Alfonso Ruggiero; Vincenzo Sabato | 24h |  | 1,200 |  |
| 46 | 1.8.4.2 | Mapping Hw/Sw |  | 0.25d | 2018-11-21 11:00 | 2018-11-21 13:00 |  |  |  | 18.7d |  |  | Davide Bottiglieri; Silvio Corso | 4h |  | 200 |  |
| 47 | 1.8.4.3 | Gestione dei dati Persistenti |  | 2.5d | 2018-11-22 16:00 | 2018-11-25 11:00 | 45 |  |  | 13.95d | 0d |  | Francesco Breve; Rosaria Iorio | 40h |  | 2,000 |  |
| 48 | 1.8.5 | Servizi dei sottosistemi |  | 1d | 2018-11-25 11:00 | 2018-11-26 11:00 | 45, 47, 41 |  |  | 13.95d | 0d |  | Giuseppe Cavaliere; Paolo Cantarella | 16h |  | 800 |  |
| 49 | 1.8.6 | **Revisione** |  | 1d | 2018-11-26 11:00 | 2018-11-27 11:00 | 42, 43, 44, 48 |  |  | 13.95d |  |  | Alfonso Ruggiero; Federico Vitale; Francesco Vicidomini | 36h |  | 2,280 |  |
| 50 | 1.8.6.1 | Revisione del Reviewer |  | 0.5d | 2018-11-26 11:00 | 2018-11-26 16:00 |  |  |  | 13.95d | 0d |  | Alfonso Ruggiero | 4h |  | 200 |  |
| 51 | 1.8.6.2 | Revisione dei PM |  | 0.5d | 2018-11-26 16:00 | 2018-11-27 11:00 | 50 |  |  | 13.95d |  |  | Federico Vitale; Francesco Vicidomini | 8h |  | 560 |  |
| 52 | 1.9 | **TCS** |  | 4d | 2018-11-27 09:00 | 2018-11-30 18:00 | 39 |  |  | 10.2d | 0d |  | Alfonso Ruggiero; Davide Bottiglieri; Federico Vitale; Francesco Breve; Francesco Vicidomini; Giuseppe Cavaliere; Paolo Cantarella; Rosaria Iorio; Silvio Corso; Vincenzo Sabato | 580h |  | 31,640 |  |
| 53 | 1.9.1 | Meeting |  | 0.25d | 2018-11-27 09:00 | 2018-11-27 11:00 |  |  |  | 10.2d | 0d | start no earlier than 2018-11-27 09:00 | Alfonso Ruggiero; Davide Bottiglieri; Federico Vitale; Francesco Breve; Francesco Vicidomini; Giuseppe Cavaliere; Paolo Cantarella; Rosaria Iorio; Silvio Corso; Vincenzo Sabato | 20h |  | 1,080 |  |
| 54 | 1.9.2 | Introduzione |  | 0.25d | 2018-11-27 11:00 | 2018-11-27 13:00 | 53 |  |  | 10.2d | 0d |  | Alfonso Ruggiero; Vincenzo Sabato | 4h |  | 200 |  |
| 55 | 1.9.3 | Test Case Specification |  | 2.5d | 2018-11-27 14:00 | 2018-11-29 18:00 | 53, 54 |  |  | 10.2d | 0d |  | Federico Vitale; Francesco Vicidomini; Rosaria Iorio; Silvio Corso; Alfonso Ruggiero; Davide Bottiglieri; Francesco Breve; Giuseppe Cavaliere; Paolo Cantarella; Vincenzo Sabato | 200h |  | 10,800 |  |

| ID | WBS | Task | Type | Duration | Start | Finish | Predecessors | Total slack | Free slack | Resources | Work | Cost |
| --- | --- | --- | --- | --- | --- | --- | --- | --- | --- | --- | --- | --- |
| 56 | 1.9.4 | **Revisione** |  | 1d | 2018-11-30 09:00 | 2018-11-30 18:00 | 54, 55 | 10.2d |  | Federico Vitale; Francesco Vicidomini; Rosaria Iorio | 36h | 2,280 |
| 57 | 1.9.4.1 | Revisione del Reviewer |  | 0.5d | 2018-11-30 09:00 | 2018-11-30 13:00 |  | 10.2d | 0d | Rosaria Iorio | 4h | 200 |
| 58 | 1.9.4.2 | Revisione dei PM |  | 0.5d | 2018-11-30 14:00 | 2018-11-30 18:00 | 57 | 10.2d |  | Federico Vitale; Francesco Vicidomini | 8h | 560 |
| 59 | 1.10 | Consegna SDD & TCS | milestone, manual | 0d | 2018-12-01 09:00 | 2018-12-01 09:00 | 40, 52 |  |  | Federico Vitale; Filomena Ferrucci |  | 100 |
| 60 | 1.11 | **ODD** |  | 2d | 2018-12-01 09:00 | 2018-12-02 18:00 | 59 | 11d | 0.8d | Alfonso Ruggiero; Davide Bottiglieri; Francesco Breve; Giuseppe Cavaliere; Paolo Cantarella; Rosaria Iorio; Silvio Corso; Vincenzo Sabato | 184h | 9,680 |
| 61 | 1.11.1 | Introduzione |  | 0.25d | 2018-12-01 09:00 | 2018-12-01 11:00 |  | 11.75d | 0.75d | Giuseppe Cavaliere | 2h | 100 |
| 62 | 1.11.2 | Design Pattern |  | 0.25d | 2018-12-01 09:00 | 2018-12-01 11:00 |  | 11d | 0d | Alfonso Ruggiero; Davide Bottiglieri; Francesco Breve | 6h | 300 |
| 63 | 1.11.3 | Package |  | 0.25d | 2018-12-01 11:00 | 2018-12-01 13:00 | 62 | 11d | 0d | Paolo Cantarella; Rosaria Iorio | 4h | 200 |
| 64 | 1.11.4 | Interfaccia |  | 0.5d | 2018-12-01 14:00 | 2018-12-01 18:00 | 63 | 11d | 0d | Silvio Corso; Vincenzo Sabato | 8h | 400 |
| 65 | 1.11.5 | **Revisione** |  | 1d | 2018-12-02 09:00 | 2018-12-02 18:00 | 61, 62, 63, 64 | 11d |  | Federico Vitale; Francesco Breve; Francesco Vicidomini | 36h | 2,280 |
| 66 | 1.11.5.1 | Revisione del Reviewer |  | 0.5d | 2018-12-02 09:00 | 2018-12-02 13:00 |  | 11d | 0d | Francesco Breve | 4h | 200 |
| 67 | 1.11.5.2 | Revisione dei PM |  | 0.5d | 2018-12-02 14:00 | 2018-12-02 18:00 | 66 | 11d |  | Federico Vitale; Francesco Vicidomini | 8h | 560 |
| 68 | 1.12 | **TP** |  | 2.8d | 2018-12-01 09:00 | 2018-12-03 16:24 | 59 | 10.2d | 0d | Alfonso Ruggiero; Davide Bottiglieri; Federico Vitale; Francesco Breve; Francesco Vicidomini; Giuseppe Cavaliere; Paolo Cantarella; Rosaria Iorio; Silvio Corso; Vincenzo Sabato | 321.28h | 17,728 |
| 69 | 1.12.1 | Introduzione |  | 0.13d | 2018-12-01 09:00 | 2018-12-01 10:02 |  | 11.87d | 1.67d | Davide Bottiglieri | 1.04h | 52 |
| 70 | 1.12.2 | Funzionalità da testare |  | 0.25d | 2018-12-01 09:00 | 2018-12-01 11:00 |  | 11.75d | 1.55d | Alfonso Ruggiero; Francesco Breve | 4h | 200 |
| 71 | 1.12.3 | Criteri di Pass/Failed |  | 0.13d | 2018-12-01 09:00 | 2018-12-01 10:02 |  | 10.37d | 0.17d | Davide Bottiglieri | 1.04h | 52 |
| 72 | 1.12.4 | Approccio |  | 0.3d | 2018-12-01 09:00 | 2018-12-01 11:24 |  | 10.2d | 0d | Federico Vitale; Giuseppe Cavaliere; Paolo Cantarella | 7.2h | 408 |
| 73 | 1.12.5 | Test Case |  | 1.5d | 2018-12-01 11:24 | 2018-12-02 16:24 | 71, 72 | 10.2d | 0d | Francesco Vicidomini; Rosaria Iorio; Silvio Corso; Vincenzo Sabato | 48h | 2,640 |
| 74 | 1.12.6 | **Revisione** |  | 1d | 2018-12-02 16:24 | 2018-12-03 16:24 | 69, 70, 71, 72, 73 | 10.2d |  | Federico Vitale; Francesco Vicidomini; Vincenzo Sabato | 36h | 2,280 |
| 75 | 1.12.6.1 | Revisione del Reviewer |  | 0.5d | 2018-12-02 16:24 | 2018-12-03 11:24 |  | 10.2d | 0d | Vincenzo Sabato | 4h | 200 |
| 76 | 1.12.6.2 | Revisione dei PM |  | 0.5d | 2018-12-03 11:24 | 2018-12-03 16:24 | 75 | 10.2d |  | Federico Vitale; Francesco Vicidomini | 8h | 560 |
| 77 | 1.13 | Consegna ODD & TP | milestone, manual | 0d | 2018-12-03 16:24 | 2018-12-03 16:24 | 60, 68 |  |  | Federico Vitale; Filomena Ferrucci |  | 100 |
| 78 | 1.14 | **Implementazione** |  | 28.2d? | 2018-12-03 16:24 | 2019-01-06 09:00 | 77 | 9d | 0d | Alfonso Ruggiero; Davide Bottiglieri; Federico Vitale; Francesco Breve; Francesco Vicidomini; Giuseppe Cavaliere; Paolo Cantarella; Rosaria Iorio; Silvio Corso; Vincenzo Sabato | 3488h | 184,484 |
| 79 | 1.14.1 | Tutorato NodeJS |  | 1d | 2018-12-03 16:24 | 2018-12-04 16:24 |  | 10.2d | 0d | Federico Vitale; Francesco Vicidomini | 16h | 1,120 |
| 80 | 1.14.2 | Tutorato Mocha e Chai |  | 0.5d | 2018-12-04 16:24 | 2018-12-05 11:24 | 79 | 10.7d | 0.5d | Federico Vitale; Francesco Vicidomini | 8h | 560 |
| 81 | 1.14.3 | Tutorato Bootstrap |  | 0.5d | 2018-12-03 16:24 | 2018-12-04 11:24 |  | 11.7d | 1.5d | Federico Vitale; Francesco Vicidomini | 8h | 560 |
| 82 | 1.14.4 | Tutorato Firebase |  | 1d | 2018-12-04 16:24 | 2018-12-05 16:24 | 79 | 10.2d | 0d | Federico Vitale; Francesco Vicidomini | 16h | 1,120 |

| ID | WBS | Task | Type | Duration | Start | Finish | Predecessors | Total slack | Free slack | Constraint | Resources | Work | Cost |
| --- | --- | --- | --- | --- | --- | --- | --- | --- | --- | --- | --- | --- | --- |
| 83 | 1.14.5 | **Gestione Profilo Personale** |  | 5d | 2018-12-05 16:24 | 2018-12-10 16:24 | 79, 80, 81, 82 | 10.2d | 0d |  | Alfonso Ruggiero; Davide Bottiglieri | 176h | 8,800 |
| 84 | 1.14.5.1 | Coding |  | 5d | 2018-12-05 16:24 | 2018-12-10 16:24 |  | 10.2d |  |  | Alfonso Ruggiero; Davide Bottiglieri | 80h | 4,000 |
| 85 | 1.14.5.2 | Testing |  | 1d | 2018-12-05 16:24 | 2018-12-06 16:24 |  | 14.2d |  |  | Alfonso Ruggiero; Davide Bottiglieri | 16h | 800 |
| 86 | 1.14.6 | **Gestione Coordinatori** |  | 10d? | 2018-12-10 16:24 | 2018-12-20 16:24 | 79, 80, 81, 82, 83 | 10.2d | 0d |  | Francesco Breve; Giuseppe Cavaliere | 336h | 16,800 |
| 87 | 1.14.6.1 | Coding |  | 10d? | 2018-12-10 16:24 | 2018-12-20 16:24 |  | 10.2d |  |  | Francesco Breve; Giuseppe Cavaliere | 160h | 8,000 |
| 88 | 1.14.6.2 | Testing |  | 1d | 2018-12-10 16:24 | 2018-12-11 16:24 |  | 19.2d |  |  | Francesco Breve; Giuseppe Cavaliere | 16h | 800 |
| 89 | 1.14.7 | **Gestione Forum** |  | 10d? | 2018-12-10 16:24 | 2018-12-20 16:24 | 79, 80, 81, 82, 83 | 10.2d | 0d |  | Paolo Cantarella; Rosaria Iorio | 336h | 16,800 |
| 90 | 1.14.7.1 | Coding |  | 10d? | 2018-12-10 16:24 | 2018-12-20 16:24 |  | 10.2d |  |  | Paolo Cantarella; Rosaria Iorio | 160h | 8,000 |
| 91 | 1.14.7.2 | Testing |  | 1d | 2018-12-10 16:24 | 2018-12-11 16:24 |  | 19.2d |  |  | Paolo Cantarella; Rosaria Iorio | 16h | 800 |
| 92 | 1.14.8 | **Gestione Chat** |  | 10d? | 2018-12-20 16:24 | 2019-01-04 16:24 | 83, 86, 89, 82, 81, 80, 79 | 10.2d | 1.2d |  | Silvio Corso; Vincenzo Sabato | 336h | 16,800 |
| 93 | 1.14.8.1 | Coding |  | 10d? | 2018-12-20 16:24 | 2019-01-04 16:24 |  | 10.2d |  |  | Silvio Corso; Vincenzo Sabato | 160h | 8,000 |
| 94 | 1.14.8.2 | Testing |  | 1d | 2018-12-20 16:24 | 2018-12-21 16:24 |  | 19.2d |  |  | Silvio Corso; Vincenzo Sabato | 16h | 800 |
| 95 | 1.14.9 | Testing di Integrazione | milestone | 0d | 2018-12-09 09:00 | 2018-12-09 09:00 |  | 32d |  | start no earlier than 2018-12-09 09:00 |  |  |  |
| 96 | 1.14.10 | Testing di Integrazione | milestone | 0d | 2018-12-16 09:00 | 2018-12-16 09:00 |  | 25d |  | start no earlier than 2018-12-16 09:00 |  |  |  |
| 97 | 1.14.11 | Testing di Integrazione | milestone | 0d | 2018-12-23 09:00 | 2018-12-23 09:00 |  | 18d |  | start no earlier than 2018-12-23 09:00 |  |  |  |
| 98 | 1.14.12 | Testing di Integrazione | milestone | 0d | 2018-12-30 09:00 | 2018-12-30 09:00 |  | 14d |  | start no earlier than 2018-12-30 09:00 |  |  |  |
| 99 | 1.14.13 | Testing di Integrazione | milestone | 0d | 2019-01-06 09:00 | 2019-01-06 09:00 |  | 9d | 0d | start no earlier than 2019-01-06 09:00 |  |  |  |
| 100 | 1.14.14 | Consegna del Codice | milestone | 0d | 2019-01-06 09:00 | 2019-01-06 09:00 | 99, 92, 89, 86, 83 | 9d |  |  | Federico Vitale; Filomena Ferrucci |  | 100 |
| 101 | 1.15 | Preparazione presentazione finale |  | 1d | 2019-01-06 09:00 | 2019-01-06 18:00 | 78 | 9d | 8d |  | Alfonso Ruggiero; Davide Bottiglieri; Federico Vitale; Francesco Breve; Francesco Vicidomini; Giuseppe Cavaliere; Paolo Cantarella; Rosaria Iorio; Silvio Corso; Vincenzo Sabato | 80h | 4,320 |
| 102 | 1.16 | Presentazione Finale | milestone | 0d | 2019-01-15 09:00 | 2019-01-15 09:00 | 101 | 1d |  | start no earlier than 2019-01-15 09:00 | Alfonso Ruggiero; Davide Bottiglieri; Federico Vitale; Filomena Ferrucci; Francesco Breve; Francesco Vicidomini; Giuseppe Cavaliere; Paolo Cantarella; Rosaria Iorio; Silvio Corso; Vincenzo Sabato |  | 100 |
